Schedule from MS Project, 2018-09-19 to 2018-12-13, costs in ¥.
Microsoft

## Calendars

- 标准: Mon-Fri 08:00-12:00, 13:00-17:00; Sat-Sun 08:00-21:00.

## Resources

| Resource | Rate |
| --- | --- |
| 蔡峰 | 28 |
| 黄为波 | 28 |
| 江亮儒 | 28 |
| 苏雨豪 | 28 |
| 陈子卿 | 28 |
| 小组全体成员 |  |

## Schedule

| ID | WBS | Task | Type | Duration | Start | Finish | Baseline start | Baseline finish | Baseline duration | Total slack | Resources | Work | Cost |
| --- | --- | --- | --- | --- | --- | --- | --- | --- | --- | --- | --- | --- | --- |
| 1 | 1 | **需求工程项目准备** |  | 59.75d | 2018-09-19 09:00 | 2018-11-08 18:00 | 2018-09-19 09:00 | 2018-11-08 18:00 | 59.75d |  |  | 126h | 3,528 |
| 2 | 1.1 | 确定分组成员 | manual | 1h | 2018-09-19 09:00 | 2018-09-19 10:00 | 2018-09-19 09:00 | 2018-09-19 10:00 | 1h |  | 蔡峰; 陈子卿; 黄为波; 江亮儒; 苏雨豪 | 5h | 140 |
| 3 | 1.2 | 课题选定 | manual | 2d | 2018-09-19 09:00 | 2018-09-20 18:00 | 2018-09-19 09:00 | 2018-09-20 18:00 | 2d |  |  |  |  |
| 4 | 1.3 | 统一开发工具 |  | 1d | 2018-09-19 09:00 | 2018-09-20 09:00 | 2018-09-19 09:00 | 2018-09-20 09:00 | 1d | 99.88d | 蔡峰; 陈子卿; 黄为波; 江亮儒; 苏雨豪 | 40h | 1,120 |
| 5 | 1.4 | 确定小组成员职责 | manual | 1d | 2018-09-26 09:00 | 2018-09-27 09:00 | 2018-09-26 09:00 | 2018-09-27 09:00 | 1d |  | 蔡峰; 陈子卿; 黄为波; 江亮儒; 苏雨豪 | 40h | 1,120 |
| 6 | 1.5 | **需求工程项目计划** |  | 50.5d | 2018-09-26 09:00 | 2018-11-07 18:00 | 2018-09-26 09:00 | 2018-11-07 18:00 | 50.5d |  |  | 41h | 1,148 |
| 7 | 1.5.1 | 人力资源管理计划 | manual | 3h | 2018-09-28 09:00 | 2018-09-28 12:00 | 2018-09-28 09:00 | 2018-09-28 12:00 | 3h |  | 蔡峰 | 3h | 84 |
| 8 | 1.5.2 | 成本管理计划 | manual | 3h | 2018-09-28 09:00 | 2018-09-28 12:00 | 2018-09-28 09:00 | 2018-09-28 12:00 | 3h |  | 陈子卿 | 3h | 84 |
| 9 | 1.5.3 | 沟通管理计划 | manual | 3h | 2018-09-28 09:00 | 2018-09-28 12:00 | 2018-09-28 09:00 | 2018-09-28 12:00 | 3h |  | 苏雨豪 | 3h | 84 |
| 10 | 1.5.4 | 风险管理计划 | manual | 3h | 2018-09-28 09:00 | 2018-09-28 12:00 | 2018-09-28 09:00 | 2018-09-28 12:00 | 3h |  | 陈子卿 | 3h | 84 |
| 11 | 1.5.5 | 需求工程项目计划书 |  | 5h | 2018-09-27 09:00 | 2018-09-27 15:00 | 2018-09-27 09:00 | 2018-09-27 15:00 | 5h | 91d | 蔡峰; 陈子卿; 黄为波; 江亮儒; 苏雨豪 | 25h | 700 |
| 12 | 1.5.6 | 需求计划的修改与更新 | manual | 1h | 2018-10-12 09:00 | 2018-10-12 10:00 |  |  |  |  | 黄为波 | 1h | 28 |
| 13 | 1.5.7 | 可行性分析报告的修改 | manual | 3h | 2018-10-13 09:00 | 2018-10-13 12:00 |  |  |  |  | 黄为波 | 3h | 84 |
| 14 | 2 | **需求开发阶段** |  | 44.38d | 2018-11-01 09:00 | 2018-12-08 18:00 | 2018-11-01 09:00 | 2018-12-08 18:00 | 44.38d |  |  | 285.5h | 7,994 |
| 15 | 2.1 | **需求获取** |  | 9.88d? | 2018-11-06 09:00 | 2018-11-14 15:00 | 2018-11-05 09:00 | 2018-11-14 15:00 | 10.88d | 0d |  | 67h | 1,876 |
| 16 | 2.1.1 | 用户群分类 | manual | 2h | 2018-11-08 09:00 | 2018-11-08 11:00 | 2018-11-08 09:00 | 2018-11-08 11:00 | 2h |  | 蔡峰 | 2h | 56 |
| 17 | 2.1.2 | 定义愿景和范围 | manual | 3h | 2018-11-08 09:00 | 2018-11-08 12:00 | 2018-11-08 09:00 | 2018-11-08 12:00 | 3h |  | 黄为波; 陈子卿 | 6h | 168 |
| 18 | 2.1.3 | 初步制定功能点列表 | manual | 3h | 2018-11-08 09:00 | 2018-11-08 12:00 | 2018-11-08 09:00 | 2018-11-08 12:00 | 3h |  | 江亮儒; 苏雨豪 | 6h | 168 |
| 19 | 2.1.4 | 选择产品代表 | manual | 1h | 2018-11-08 09:00 | 2018-11-08 10:00 | 2018-11-08 09:00 | 2018-11-08 10:00 | 1h |  | 蔡峰; 陈子卿; 黄为波; 江亮儒; 苏雨豪 | 5h | 140 |
| 20 | 2.1.5 | 建立核心队伍 | manual | 1h | 2018-11-08 09:00 | 2018-11-08 10:00 | 2018-11-08 09:00 | 2018-11-08 10:00 | 1h |  | 蔡峰; 陈子卿; 黄为波; 江亮儒; 苏雨豪 | 5h | 140 |
| 21 | 2.1.6 | 项目下达者的访谈 | manual | 1h | 2018-11-14 09:00 | 2018-11-14 10:00 | 2018-11-14 09:00 | 2018-11-14 10:00 | 1h |  | 蔡峰; 陈子卿; 黄为波; 江亮儒; 苏雨豪 | 5h | 140 |
| 22 | 2.1.7 | 绘制关联图 | manual | 2h | 2018-11-12 09:00 | 2018-11-12 11:00 | 2018-11-12 09:00 | 2018-11-12 11:00 | 2h |  | 蔡峰 | 2h | 56 |
| 23 | 2.1.8 | 画用例图 | manual | 1d | 2018-11-09 09:00 | 2018-11-10 09:00 | 2018-11-09 09:00 | 2018-11-10 09:00 | 1d |  | 江亮儒 | 8h | 224 |
| 24 | 2.1.9 | 教师需求第一次访谈 | manual | 1h | 2018-11-06 09:00 | 2018-11-06 10:00 | 2018-11-06 09:00 | 2018-11-06 10:00 | 1h |  | 陈子卿 | 1h | 28 |
| 25 | 2.1.10 | 学生需求第一次访谈 | manual | 1h | 2018-11-06 09:00 | 2018-11-06 10:00 | 2018-11-06 09:00 | 2018-11-06 10:00 | 1h |  | 苏雨豪 | 1h | 28 |
| 26 | 2.1.11 | 游客需求第一次访谈 | manual | 1h | 2018-11-06 09:00 | 2018-11-06 10:00 | 2018-11-06 09:00 | 2018-11-06 10:00 | 1h |  | 蔡峰 | 1h | 28 |
| 27 | 2.1.12 | 更新用例图 | manual | 4h | 2018-11-12 09:00 | 2018-11-12 14:00 | 2018-11-12 09:00 | 2018-11-12 14:00 | 4h |  | 苏雨豪 | 4h | 112 |
| 28 | 2.1.13 | 制作界面原型 | manual | 1d | 2018-11-09 09:00 | 2018-11-10 09:00 | 2018-11-09 09:00 | 2018-11-10 09:00 | 1d |  | 陈子卿 | 8h | 224 |
| 29 | 2.1.14 | 教师需求第二次访谈 | manual | 1h | 2018-11-12 09:00 | 2018-11-12 10:00 | 2018-11-12 09:00 | 2018-11-12 10:00 | 1h |  | 黄为波 | 1h | 28 |
| 30 | 2.1.15 | 学生需求第二次访谈 | manual | 1h | 2018-11-12 09:00 | 2018-11-12 10:00 | 2018-11-12 09:00 | 2018-11-12 10:00 | 1h |  | 江亮儒 | 1h | 28 |
| 31 | 2.1.16 | 游客需求第二次访谈 | manual | 1h | 2018-11-12 09:00 | 2018-11-12 10:00 | 2018-11-12 09:00 | 2018-11-12 10:00 | 1h |  | 苏雨豪 | 1h | 28 |
| 32 | 2.1.17 | 更新界面原型 | manual | 5h | 2018-11-14 09:00 | 2018-11-14 15:00 | 2018-11-14 09:00 | 2018-11-14 15:00 | 5h |  | 陈子卿; 黄为波 | 10h | 280 |
| 33 | 2.1.18 | <新任务> | manual | 1d? | 2018-11-06 09:00 | 2018-11-07 09:00 | 2018-11-05 09:00 | 2018-11-06 09:00 | 1d? |  |  |  |  |
| 34 | 2.1.19 | <新任务> | manual | 1d? | 2018-11-06 09:00 | 2018-11-07 09:00 | 2018-11-05 09:00 | 2018-11-06 09:00 | 1d? |  |  |  |  |
| 35 | 2.1.20 | <新任务> | manual | 1d? | 2018-11-06 09:00 | 2018-11-07 09:00 | 2018-11-05 09:00 | 2018-11-06 09:00 | 1d? |  |  |  |  |

| ID | WBS | Task | Type | Duration | Start | Finish | Baseline start | Baseline finish | Baseline duration | Total slack | Resources | Work | Cost |
| --- | --- | --- | --- | --- | --- | --- | --- | --- | --- | --- | --- | --- | --- |
| 36 | 2.2 | **需求分析** |  | 7.44d | 2018-11-15 09:00 | 2018-11-21 10:30 | 2018-11-15 09:00 | 2018-11-21 10:30 | 7.44d | 0d |  | 71.5h | 2,002 |
| 37 | 2.2.1 | 创建开发原型 | manual | 3h | 2018-11-15 09:00 | 2018-11-15 12:00 | 2018-11-15 09:00 | 2018-11-15 12:00 | 3h |  | 江亮儒 | 3h | 84 |
| 38 | 2.2.2 | 分析获取需求的可行性 | manual | 3h | 2018-11-16 09:00 | 2018-11-16 12:00 | 2018-11-16 09:00 | 2018-11-16 12:00 | 3h |  | 陈子卿; 黄为波 | 6h | 168 |
| 39 | 2.2.3 | 确定需求的优先级 | manual | 2h | 2018-11-16 09:00 | 2018-11-16 11:00 | 2018-11-16 09:00 | 2018-11-16 11:00 | 2h |  | 蔡峰 | 2h | 56 |
| 40 | 2.2.4 | 需求建模 | manual | 3h | 2018-11-16 09:00 | 2018-11-16 12:00 | 2018-11-16 09:00 | 2018-11-16 12:00 | 3h |  | 苏雨豪 | 3h | 84 |
| 41 | 2.2.5 | 编写数据字典 | manual | 10h | 2018-11-19 09:00 | 2018-11-20 11:00 | 2018-11-19 09:00 | 2018-11-20 11:00 | 10h |  | 蔡峰; 陈子卿; 黄为波; 江亮儒; 苏雨豪 | 50h | 1,400 |
| 42 | 2.2.6 | 第8次会议 | manual | 1.5h | 2018-11-21 09:00 | 2018-11-21 10:30 | 2018-11-21 09:00 | 2018-11-21 10:30 | 1.5h |  | 蔡峰; 陈子卿; 黄为波; 江亮儒; 苏雨豪 | 7.5h | 210 |
| 43 | 2.3 | **需求规范规格** |  | 9.25d | 2018-11-21 09:00 | 2018-11-28 18:00 | 2018-11-21 09:00 | 2018-11-28 18:00 | 9.25d |  |  | 91h | 2,548 |
| 44 | 2.3.1 | 使用需求规格说明书的模版 | manual | 1h | 2018-11-22 09:00 | 2018-11-22 10:00 | 2018-11-22 09:00 | 2018-11-22 10:00 | 1h |  | 蔡峰 | 1h | 28 |
| 45 | 2.3.2 | 确认需求来源 | manual | 2h | 2018-11-22 09:00 | 2018-11-22 11:00 | 2018-11-22 09:00 | 2018-11-22 11:00 | 2h |  | 陈子卿 | 2h | 56 |
| 46 | 2.3.3 | 确定每个需求的唯一标识 | manual | 4h | 2018-11-23 09:00 | 2018-11-23 14:00 | 2018-11-23 09:00 | 2018-11-23 14:00 | 4h |  | 黄为波 | 4h | 112 |
| 47 | 2.3.4 | 记录非功能需求 | manual | 2h | 2018-11-23 09:00 | 2018-11-23 11:00 | 2018-11-23 09:00 | 2018-11-23 11:00 | 2h |  | 江亮儒; 苏雨豪 | 4h | 112 |
| 48 | 2.3.5 | 编写需求规格说明书 | manual | 2d | 2018-11-26 09:00 | 2018-11-28 09:00 | 2018-11-26 09:00 | 2018-11-28 09:00 | 2d |  | 蔡峰; 陈子卿; 黄为波; 江亮儒; 苏雨豪 | 80h | 2,240 |
| 49 | 2.4 | **需求规格审核** |  | 7.25d | 2018-11-28 09:00 | 2018-12-03 18:00 | 2018-11-28 09:00 | 2018-12-03 18:00 | 7.25d |  |  | 56h | 1,568 |
| 50 | 2.4.1 | 需求评审 | manual | 8h | 2018-11-29 09:00 | 2018-11-30 09:00 | 2018-11-29 09:00 | 2018-11-30 09:00 | 8h |  | 陈子卿; 黄为波; 江亮儒 | 24h | 672 |
| 51 | 2.4.2 | 确定合格标准 | manual | 4h | 2018-11-29 09:00 | 2018-11-29 14:00 | 2018-11-29 09:00 | 2018-11-29 14:00 | 4h |  | 蔡峰; 苏雨豪 | 8h | 224 |
| 52 | 2.4.3 | 编写用户手册 | manual | 6h | 2018-11-30 09:00 | 2018-11-30 16:00 | 2018-11-30 09:00 | 2018-11-30 16:00 | 6h |  | 蔡峰; 陈子卿 | 12h | 336 |
| 53 | 2.4.4 | 进行需求测试 | manual | 4h | 2018-12-03 09:00 | 2018-12-03 14:00 | 2018-12-03 09:00 | 2018-12-03 14:00 | 4h |  | 黄为波; 江亮儒; 苏雨豪 | 12h | 336 |
| 54 | 2.4.5 | <新任务> | manual | 1d? | 2018-11-28 09:00 | 2018-11-29 09:00 | 2018-11-28 09:00 | 2018-11-29 09:00 | 1d? |  |  |  |  |
| 55 | 2.4.6 | <新任务> | manual | 1d | 2018-11-28 09:00 | 2018-11-29 09:00 | 2018-11-28 09:00 | 2018-11-29 09:00 | 1d |  |  |  |  |
| 56 | 3 | **需求管理阶段** |  | 10.25d | 2018-12-05 09:00 | 2018-12-13 18:00 | 2018-12-05 09:00 | 2018-12-13 18:00 | 10.25d |  |  | 124h | 3,472 |
| 57 | 3.1 | 建立需求变更控制过程 | manual | 1d | 2018-12-05 09:00 | 2018-12-06 09:00 | 2018-12-05 09:00 | 2018-12-06 09:00 | 1d |  | 蔡峰 | 8h | 224 |
| 58 | 3.2 | 对需求变更影响分析 | manual | 1d | 2018-12-05 09:00 | 2018-12-06 09:00 | 2018-12-05 09:00 | 2018-12-06 09:00 | 1d |  | 黄为波 | 8h | 224 |
| 59 | 3.3 | 建立基线并控制需求集合版本 | manual | 1d | 2018-12-05 09:00 | 2018-12-06 09:00 | 2018-12-05 09:00 | 2018-12-06 09:00 | 1d |  | 江亮儒 | 8h | 224 |
| 60 | 3.4 | 记录需求变更的历史 | manual | 4h | 2018-12-06 09:00 | 2018-12-06 14:00 | 2018-12-06 09:00 | 2018-12-06 14:00 | 4h |  | 蔡峰 | 4h | 112 |
| 61 | 3.5 | 衡量需求的稳定性 | manual | 1d | 2018-12-07 09:00 | 2018-12-08 09:00 | 2018-12-07 09:00 | 2018-12-08 09:00 | 1d |  | 黄为波 | 8h | 224 |
| 62 | 3.6 | 重新编写测试用例 | manual | 1d | 2018-12-07 09:00 | 2018-12-08 09:00 | 2018-12-07 09:00 | 2018-12-08 09:00 | 1d |  | 江亮儒 | 8h | 224 |
| 63 | 3.7 | 完善界面原型 | manual | 2d | 2018-12-10 09:00 | 2018-12-12 09:00 | 2018-12-10 09:00 | 2018-12-12 09:00 | 2d |  | 陈子卿; 黄为波 | 32h | 896 |
| 64 | 3.8 | 完善用户手册 | manual | 2d | 2018-12-10 09:00 | 2018-12-12 09:00 | 2018-12-10 09:00 | 2018-12-12 09:00 | 2d |  | 蔡峰; 江亮儒 | 32h | 896 |
| 65 | 3.9 | 验证变更 | manual | 2d | 2018-12-10 09:00 | 2018-12-12 09:00 | 2018-12-10 09:00 | 2018-12-12 09:00 | 2d |  | 苏雨豪 | 16h | 448 |

| ID | WBS | Task | Type | Duration | Start | Finish | Total slack | Resources | Work | Cost |
| --- | --- | --- | --- | --- | --- | --- | --- | --- | --- | --- |
| 66 | 4 | **培训与翻转课堂** |  | 36.62d | 2018-09-28 09:00 | 2018-10-28 17:00 | 0d |  | 38h | 308 |
| 67 | 4.1 | 负责讲解project的使用 | manual | 2h | 2018-09-28 09:00 | 2018-09-28 11:00 |  | 小组全体成员; 黄为波 | 4h | 56 |
| 68 | 4.2 | 负责讲解word文档规范排版 | manual | 1h | 2018-09-29 09:00 | 2018-09-29 10:00 |  | 黄为波; 小组全体成员 | 2h | 28 |
| 69 | 4.3 | uml概述的学习以及PPT制作 | manual | 1d | 2018-10-13 09:00 | 2018-10-13 17:00 |  | 小组全体成员 | 8h |  |
| 70 | 4.4 | uml工具的学习 | manual | 1d | 2018-10-21 09:00 | 2018-10-21 17:00 |  | 小组全体成员 | 8h |  |
| 71 | 4.5 | uml工具翻转PPT制作 | manual | 1d | 2018-10-21 09:00 | 2018-10-21 17:00 |  | 江亮儒 | 8h | 224 |
| 72 | 4.6 | uml建模基础学习 | manual | 1d | 2018-10-28 09:00 | 2018-10-28 17:00 |  | 小组全体成员 | 8h |  |
| 73 | 5 | **会议** |  | 27.88d | 2018-09-26 09:00 | 2018-10-20 10:00 | 0d |  | 12h |  |
| 74 | 5.1 | 第1次会议（明确贯穿项目的职责） | manual | 8h | 2018-09-26 09:00 | 2018-09-26 18:00 |  | 小组全体成员 | 8h |  |
| 75 | 5.2 | 第2次会议(任务的安排与约定) | manual | 1h | 2018-09-28 09:00 | 2018-09-28 10:00 |  | 小组全体成员 | 1h |  |
| 76 | 5.3 | 第3次会议(任务的安排与约定) | manual | 1h | 2018-10-12 09:00 | 2018-10-12 10:00 |  | 小组全体成员 | 1h |  |
| 77 | 5.4 | 第4次会议(任务的安排与约定) | manual | 1h | 2018-10-19 09:00 | 2018-10-19 10:00 |  | 小组全体成员 | 1h |  |
| 78 | 5.5 | 第5次会议(阶段性检查与审核) | manual | 1h | 2018-10-20 09:00 | 2018-10-20 10:00 |  | 小组全体成员 | 1h |  |
