Schedule from MS Project, 2018-09-19 to 2018-12-14, costs in ¥, A marks actual dates.
Microsoft

## Calendars

- 标准: Mon-Fri 08:00-12:00, 13:00-17:00; Sat-Sun 08:00-21:00. Exceptions (off unless hours are given): 2018-10-01 to 2018-10-07 (国庆假期).

## Resources

| Resource | Rate |
| --- | --- |
| 蔡峰 | 28 |
| 黄为波 | 28 |
| 江亮儒 | 28 |
| 苏雨豪 | 28 |
| 陈子卿 | 28 |
| 小组全体成员 |  |

## Schedule

| ID | WBS | Task | Type | Duration | Start | Finish | Predecessors | Complete | Remaining | Baseline start | Baseline finish | Baseline duration | Constraint | Resources | Work | Actual work | Cost | Actual cost |
| --- | --- | --- | --- | --- | --- | --- | --- | --- | --- | --- | --- | --- | --- | --- | --- | --- | --- | --- |
| 1 | 1 | **需求工程项目准备** |  | 51.5d | 2018-09-19 09:00 A | 2018-11-08 18:00 |  | 99% | 0d | 2018-09-19 09:00 | 2018-11-08 18:00 | 59.75d |  |  | 55h | 55h | 980 | 980 |
| 2 | 1.1 | 确定分组成员 | manual | 1h | 2018-09-19 09:00 A | 2018-09-19 10:00 A |  | 100% |  | 2018-09-19 09:00 | 2018-09-19 10:00 | 1h |  | 小组全体成员 | 1h | 1h |  |  |
| 3 | 1.2 | 课题选定 | manual | 2d | 2018-09-19 10:00 A | 2018-09-21 10:00 A | 2 | 100% |  | 2018-09-19 09:00 | 2018-09-20 18:00 | 2d |  | 小组全体成员 | 2h | 2h |  |  |
| 4 | 1.3 | 统一开发工具 |  | 1d | 2018-09-19 10:00 A | 2018-09-20 10:00 A | 2 | 100% |  | 2018-09-19 09:00 | 2018-09-20 09:00 | 1d |  | 小组全体成员 | 8h | 8h |  |  |
| 5 | 1.4 | 确定小组成员职责 | manual | 1d | 2018-09-19 10:00 A | 2018-09-20 10:00 A | 2 | 100% |  | 2018-09-26 09:00 | 2018-09-27 09:00 | 1d |  | 小组全体成员 | 8h | 8h |  |  |
| 6 | 1.5 | **需求工程项目计划** |  | 34d | 2018-09-26 09:00 A | 2018-10-31 18:00 |  | 99% | 0d | 2018-09-26 09:00 | 2018-11-07 18:00 | 50.5d |  |  | 36h | 36h | 980 | 980 |
| 7 | 1.5.1 | 采用需求工程项目计划模板 | manual | 0.1h | 2018-09-28 09:00 A | 2018-09-28 09:06 A |  | 100% |  |  |  |  |  | 黄为波 | 0.1h | 0.1h | 2.8 | 2.8 |
| 8 | 1.5.2 | 人力资源管理计划 | manual | 3h | 2018-09-29 09:00 A | 2018-09-29 12:00 A | 7 | 100% |  | 2018-09-28 09:00 | 2018-09-28 12:00 | 3h |  | 蔡峰 | 3h | 3h | 84 | 84 |
| 9 | 1.5.3 | 成本管理计划 | manual | 2h | 2018-09-29 09:00 A | 2018-09-29 11:00 A | 7 | 100% |  | 2018-09-28 09:00 | 2018-09-28 12:00 | 3h |  | 陈子卿 | 2h | 2h | 56 | 56 |
| 10 | 1.5.4 | 沟通管理计划 | manual | 3h | 2018-09-29 09:00 A | 2018-09-29 12:00 A | 7 | 100% |  | 2018-09-28 09:00 | 2018-09-28 12:00 | 3h |  | 苏雨豪 | 3h | 3h | 84 | 84 |
| 11 | 1.5.5 | 风险管理计划 | manual | 3h | 2018-09-29 09:00 A | 2018-09-29 12:00 A | 7 | 100% |  | 2018-09-28 09:00 | 2018-09-28 12:00 | 3h |  | 陈子卿 | 3h | 3h | 84 | 84 |
| 12 | 1.5.6 | 需求工程项目计划甘特图与wbs | manual | 2h | 2018-09-29 09:00 A | 2018-09-29 11:00 A |  | 100% |  |  |  |  |  | 黄为波 | 2h | 2h | 56 | 56 |
| 14 | 1.5.7 | 可行性分析报告起草 |  | 3h | 2018-09-30 15:00 A | 2018-09-30 18:00 A |  | 100% |  | 2018-09-27 09:00 | 2018-09-27 15:00 | 5h | finish no earlier than 2018-09-30 18:00 | 江亮儒 | 3h | 3h | 84 | 84 |
| 15 | 1.5.8 | 整合并检查需求工程项目计划 | manual | 1h | 2018-09-30 09:00 A | 2018-09-30 10:00 A | 7, 8, 9, 10, 11 | 100% |  |  |  |  |  | 黄为波 | 0.3h | 0.3h | 8.4 | 8.4 |
| 16 | 1.5.9 | 需求工程项目计划PPT起草 | manual | 2h | 2018-09-30 09:00 A | 2018-09-30 11:00 A | 7, 8, 9, 10, 11 | 100% |  |  |  |  |  | 苏雨豪 | 2h | 2h | 56 | 56 |
| 17 | 1.5.10 | 需求计划的项目概述错误信息修改 | manual | 1h | 2018-10-13 09:00 A | 2018-10-13 10:00 A | 15 | 100% |  |  |  |  |  | 黄为波 | 1h | 1h | 28 | 28 |
| 18 | 1.5.11 | 增加并细化了技术可行性分析的有关内容 | manual | 1h | 2018-10-13 09:00 A | 2018-10-13 10:00 A | 14 | 100% |  |  |  |  |  | 黄为波 | 1h | 1h | 28 | 28 |
| 19 | 1.5.12 | 修改人力资源管理部分 | manual | 1h | 2018-10-14 09:00 A | 2018-10-14 10:00 A | 15, 8 | 100% |  |  |  |  |  | 蔡峰 | 1h | 1h | 28 | 28 |
| 20 | 1.5.13 | 修改wbs项目收尾部分 | manual | 0.5h | 2018-10-18 09:00 A | 2018-10-18 09:30 A | 12 | 100% |  |  |  |  |  | 黄为波 | 0.5h | 0.5h | 14 | 14 |
| 21 | 1.5.14 | 项目章程的编写 | manual | 1h | 2018-10-20 09:00 A | 2018-10-20 10:00 A |  | 100% |  |  |  |  |  | 苏雨豪 | 1h | 1h | 28 | 28 |
| 22 | 1.5.15 | 需求工程项目计划修改(更新培训日期，删除了不必要的内容) | manual | 1.5h | 2018-10-20 09:00 A | 2018-10-20 10:30 A | 17 | 100% |  |  |  |  |  | 蔡峰; 陈子卿 | 2h | 2h | 56 | 56 |
| 23 | 1.5.16 | 修改需求工程项目计划目录 | manual | 0.1h | 2018-10-21 09:00 A | 2018-10-21 09:06 A | 22 | 100% |  |  |  |  |  | 陈子卿 | 0.1h | 0.1h | 2.8 | 2.8 |
| 24 | 1.5.17 | 质量保证计划编写 | manual | 2h | 2018-10-27 09:00 A | 2018-10-27 11:00 A | 22 | 100% |  |  |  |  |  | 江亮儒; 苏雨豪 | 4h | 4h | 112 | 112 |
| 25 | 1.5.18 | 在需求工程项目计划增加范围、时间、质量管理计划 | manual | 2h | 2018-10-27 09:00 A | 2018-10-27 11:00 A | 23 | 100% |  |  |  |  |  | 黄为波 | 2h | 2h | 56 | 56 |
| 26 | 1.5.19 | 根据预评审对“人员配置管理计划”以及“干系人手册”进行修改 | manual | 1h | 2018-10-27 09:00 A | 2018-10-27 10:00 A | 25 | 100% |  |  |  |  |  | 蔡峰 | 1h | 1h | 28 | 28 |
| 27 | 1.5.20 | 风险管理计划修改，新增采购计划 | manual | 1h | 2018-10-27 09:00 A | 2018-10-27 10:00 A | 26 | 100% |  |  |  |  |  | 陈子卿 | 1h | 1h | 28 | 28 |
| 28 | 1.5.21 | 修改需求工程项目计划答辩PPT | manual | 1h | 2018-10-28 09:00 A | 2018-10-28 10:00 A | 27 | 100% |  |  |  |  |  | 蔡峰; 陈子卿 | 2h | 2h | 56 | 56 |
| 29 | 1.5.22 | 小组组内模拟评审，修改了相关文档错误内容 | manual | 1h | 2018-10-30 09:00 A | 2018-10-30 10:00 A | 28 | 100% |  |  |  |  |  | 小组全体成员 | 1h | 1h |  |  |
| 30 | 1.5.23 | 需求工程项目计划评审 | milestone, manual | 0d | 2018-10-31 09:00 | 2018-10-31 09:00 | 29 |  |  |  |  |  |  |  |  |  |  |  |

| ID | WBS | Task | Type | Duration | Start | Finish | Predecessors | Baseline start | Baseline finish | Baseline duration | Total slack | Resources | Work | Cost |
| --- | --- | --- | --- | --- | --- | --- | --- | --- | --- | --- | --- | --- | --- | --- |
| 31 | 2 | **需求开发阶段** |  | 44.38d | 2018-11-01 09:00 | 2018-12-08 18:00 |  | 2018-11-01 09:00 | 2018-12-08 18:00 | 44.38d |  |  | 38h | 896 |
| 32 | 2.1 | **需求获取** |  | 12d | 2018-11-08 09:00 | 2018-11-18 10:00 |  | 2018-11-05 09:00 | 2018-11-14 15:00 | 10.88d | 0d |  | 19h | 420 |
| 33 | 2.1.1 | 用户群分类 | manual | 1h | 2018-11-08 09:00 | 2018-11-08 10:00 | 6 | 2018-11-08 09:00 | 2018-11-08 11:00 | 2h |  | 蔡峰 | 1h | 28 |
| 34 | 2.1.2 | 定义愿景和范围 | manual | 1h | 2018-11-08 09:00 | 2018-11-08 10:00 | 6 | 2018-11-08 09:00 | 2018-11-08 12:00 | 3h |  | 黄为波; 陈子卿 | 2h | 56 |
| 35 | 2.1.3 | 初步制定功能点列表 | manual | 1h | 2018-11-08 09:00 | 2018-11-08 10:00 | 6 | 2018-11-08 09:00 | 2018-11-08 12:00 | 3h |  | 江亮儒; 苏雨豪 | 2h | 56 |
| 36 | 2.1.4 | 选择产品代表 | manual | 1h | 2018-11-08 09:00 | 2018-11-08 10:00 | 6, 35 | 2018-11-08 09:00 | 2018-11-08 10:00 | 1h |  | 小组全体成员 | 1h |  |
| 37 | 2.1.5 | 建立核心队伍 | manual | 1h | 2018-11-08 09:00 | 2018-11-08 10:00 | 33, 35 | 2018-11-08 09:00 | 2018-11-08 10:00 | 1h |  | 小组全体成员 | 1h |  |
| 38 | 2.1.6 | 项目下达者的访谈 | manual | 1h | 2018-11-10 18:00 | 2018-11-10 19:00 | 35, 45, 37 | 2018-11-14 09:00 | 2018-11-14 10:00 | 1h |  | 小组全体成员 | 1h |  |
| 39 | 2.1.7 | 绘制关联图 | manual | 1h | 2018-11-10 18:00 | 2018-11-10 19:00 | 38 | 2018-11-12 09:00 | 2018-11-12 11:00 | 2h |  | 蔡峰 | 1h | 28 |
| 40 | 2.1.8 | 画用例图 | manual | 1h | 2018-11-10 18:00 | 2018-11-10 19:00 | 38 | 2018-11-09 09:00 | 2018-11-10 09:00 | 1d |  | 江亮儒 | 1h | 28 |
| 41 | 2.1.9 | 教师需求第一次访谈 | manual | 1h | 2018-11-10 18:00 | 2018-11-10 19:00 | 39, 40 | 2018-11-06 09:00 | 2018-11-06 10:00 | 1h |  | 陈子卿 | 1h | 28 |
| 42 | 2.1.10 | 学生需求第一次访谈 | manual | 1h | 2018-11-10 18:00 | 2018-11-10 19:00 | 39, 40 | 2018-11-06 09:00 | 2018-11-06 10:00 | 1h |  | 苏雨豪 | 1h | 28 |
| 43 | 2.1.11 | 游客需求第一次访谈 | manual | 1h | 2018-11-10 18:00 | 2018-11-10 19:00 | 39, 40 | 2018-11-06 09:00 | 2018-11-06 10:00 | 1h |  | 黄为波 | 1h | 28 |
| 44 | 2.1.12 | 更新用例图 | manual | 1h | 2018-11-13 09:00 | 2018-11-13 10:00 | 39, 40, 41, 42, 43 | 2018-11-12 09:00 | 2018-11-12 14:00 | 4h |  | 苏雨豪 | 1h | 28 |
| 45 | 2.1.13 | 制作界面原型 | manual | 1h | 2018-11-15 09:00 | 2018-11-15 10:00 |  | 2018-11-09 09:00 | 2018-11-10 09:00 | 1d |  | 陈子卿 | 1h | 28 |
| 46 | 2.1.14 | 教师需求第二次访谈 | manual | 1h | 2018-11-16 09:00 | 2018-11-16 10:00 | 41 | 2018-11-12 09:00 | 2018-11-12 10:00 | 1h |  | 黄为波 | 1h | 28 |
| 47 | 2.1.15 | 学生需求第二次访谈 | manual | 1h | 2018-11-16 09:00 | 2018-11-16 10:00 | 42 | 2018-11-12 09:00 | 2018-11-12 10:00 | 1h |  | 江亮儒 | 1h | 28 |
| 48 | 2.1.16 | 游客需求第二次访谈 | manual | 1h | 2018-11-16 09:00 | 2018-11-16 10:00 | 43 | 2018-11-12 09:00 | 2018-11-12 10:00 | 1h |  | 蔡峰 | 1h | 28 |
| 49 | 2.1.17 | 更新界面原型 | manual | 1h | 2018-11-18 09:00 | 2018-11-18 10:00 | 45 | 2018-11-14 09:00 | 2018-11-14 15:00 | 5h |  | 小组全体成员 | 1h |  |
| 50 | 2.2 | **需求分析** |  | 5.38d | 2018-11-15 09:00 | 2018-11-19 10:00 |  | 2018-11-15 09:00 | 2018-11-21 10:30 | 7.44d | 0d |  | 7h | 168 |
| 51 | 2.2.1 | 创建开发原型 | manual | 1h | 2018-11-15 09:00 | 2018-11-15 10:00 | 33, 34, 35, 36, 37 | 2018-11-15 09:00 | 2018-11-15 12:00 | 3h |  | 江亮儒; 苏雨豪 | 2h | 56 |
| 52 | 2.2.2 | 分析获取需求的可行性 | manual | 1h | 2018-11-16 09:00 | 2018-11-16 10:00 | 38, 39, 40, 44, 45, 49 | 2018-11-16 09:00 | 2018-11-16 12:00 | 3h |  | 陈子卿; 黄为波 | 2h | 56 |
| 53 | 2.2.3 | 确定需求的优先级 | manual | 1h | 2018-11-16 09:00 | 2018-11-16 10:00 | 52 | 2018-11-16 09:00 | 2018-11-16 11:00 | 2h |  | 蔡峰 | 1h | 28 |
| 54 | 2.2.4 | 需求建模 | manual | 1h | 2018-11-16 09:00 | 2018-11-16 10:00 | 52, 53 | 2018-11-16 09:00 | 2018-11-16 12:00 | 3h |  | 苏雨豪 | 1h | 28 |
| 55 | 2.2.5 | 编写数据字典 | manual | 1h | 2018-11-19 09:00 | 2018-11-19 10:00 | 51, 52, 53, 54 | 2018-11-19 09:00 | 2018-11-20 11:00 | 10h |  | 小组全体成员 | 1h |  |

| ID | WBS | Task | Type | Duration | Start | Finish | Predecessors | Baseline start | Baseline finish | Baseline duration | Total slack | Free slack | Resources | Work | Cost |
| --- | --- | --- | --- | --- | --- | --- | --- | --- | --- | --- | --- | --- | --- | --- | --- |
| 56 | 2.3 | **需求规范规格** |  | 11.25d | 2018-11-21 09:00 | 2018-11-30 18:00 |  | 2018-11-21 09:00 | 2018-11-28 18:00 | 9.25d |  |  |  | 6h | 140 |
| 57 | 2.3.1 | 使用需求规格说明书的模版 | manual | 1h | 2018-11-22 09:00 | 2018-11-22 10:00 |  | 2018-11-22 09:00 | 2018-11-22 10:00 | 1h |  |  | 蔡峰 | 1h | 28 |
| 58 | 2.3.2 | 确认需求来源 | manual | 1h | 2018-11-22 09:00 | 2018-11-22 10:00 | 38, 41, 42, 43, 46, 47, 48 | 2018-11-22 09:00 | 2018-11-22 11:00 | 2h |  |  | 陈子卿 | 1h | 28 |
| 59 | 2.3.3 | 确定每个需求的唯一标识 | manual | 1h | 2018-11-23 09:00 | 2018-11-23 10:00 | 52, 53, 54 | 2018-11-23 09:00 | 2018-11-23 14:00 | 4h |  |  | 黄为波 | 1h | 28 |
| 60 | 2.3.4 | 记录非功能需求 | manual | 1h | 2018-11-23 09:00 | 2018-11-23 10:00 |  | 2018-11-23 09:00 | 2018-11-23 11:00 | 2h |  |  | 苏雨豪; 陈子卿 | 2h | 56 |
| 61 | 2.3.5 | 编写需求规格说明书 | manual | 1h | 2018-11-26 09:00 | 2018-11-26 10:00 | 57, 58, 59, 60 | 2018-11-26 09:00 | 2018-11-28 09:00 | 2d |  |  | 小组全体成员 | 1h |  |
| 62 | 2.3.6 | 需求SRS评审 | milestone, manual | 0d | 2018-11-30 09:00 | 2018-11-30 09:00 | 61 |  |  |  |  |  |  |  |  |
| 63 | 2.4 | **需求规格审核** |  | 7.25d | 2018-11-28 09:00 | 2018-12-03 18:00 |  | 2018-11-28 09:00 | 2018-12-03 18:00 | 7.25d |  |  |  | 6h | 168 |
| 64 | 2.4.1 | 确定合格标准 | manual | 1h | 2018-12-01 09:00 | 2018-12-01 10:00 | 62 | 2018-11-29 09:00 | 2018-11-29 14:00 | 4h |  |  | 蔡峰; 苏雨豪 | 2h | 56 |
| 65 | 2.4.2 | 编写用户手册 | manual | 1h | 2018-12-01 09:00 | 2018-12-01 10:00 | 49, 62 | 2018-11-30 09:00 | 2018-11-30 16:00 | 6h |  |  | 陈子卿 | 1h | 28 |
| 66 | 2.4.3 | 进行需求测试 | manual | 1h | 2018-12-02 09:00 | 2018-12-02 10:00 | 62 | 2018-12-03 09:00 | 2018-12-03 14:00 | 4h |  |  | 黄为波; 江亮儒; 苏雨豪 | 3h | 84 |
| 67 | 3 | **需求管理阶段** |  | 11.25d | 2018-12-05 09:00 | 2018-12-14 18:00 |  | 2018-12-05 09:00 | 2018-12-13 18:00 | 10.25d |  |  |  | 10h | 280 |
| 68 | 3.1 | 建立需求变更控制过程 | manual | 1h | 2018-12-05 09:00 | 2018-12-05 10:00 |  | 2018-12-05 09:00 | 2018-12-06 09:00 | 1d |  |  | 蔡峰 | 1h | 28 |
| 69 | 3.2 | 对需求变更影响分析 | manual | 1h | 2018-12-05 10:00 | 2018-12-05 11:00 | 68 | 2018-12-05 09:00 | 2018-12-06 09:00 | 1d |  |  | 黄为波 | 1h | 28 |
| 70 | 3.3 | 建立基线并控制需求集合版本 | manual | 1h | 2018-12-05 11:00 | 2018-12-05 12:00 | 69 | 2018-12-05 09:00 | 2018-12-06 09:00 | 1d |  |  | 江亮儒 | 1h | 28 |
| 71 | 3.4 | 记录需求变更的历史 | manual | 1h | 2018-12-06 09:00 | 2018-12-06 10:00 | 70 | 2018-12-06 09:00 | 2018-12-06 14:00 | 4h |  |  | 蔡峰 | 1h | 28 |
| 72 | 3.5 | 衡量需求的稳定性 | manual | 1h | 2018-12-07 09:00 | 2018-12-07 10:00 | 61, 64, 65 | 2018-12-07 09:00 | 2018-12-08 09:00 | 1d |  |  | 黄为波 | 1h | 28 |
| 73 | 3.6 | 重新编写测试用例 | manual | 1h | 2018-12-07 09:00 | 2018-12-07 10:00 |  | 2018-12-07 09:00 | 2018-12-08 09:00 | 1d |  |  | 江亮儒 | 1h | 28 |
| 74 | 3.7 | 完善界面原型 | manual | 1h | 2018-12-10 09:00 | 2018-12-10 10:00 | 49, 65 | 2018-12-10 09:00 | 2018-12-12 09:00 | 2d |  |  | 陈子卿; 黄为波 | 2h | 56 |
| 75 | 3.8 | 完善用户手册 | manual | 1h | 2018-12-11 09:00 | 2018-12-11 10:00 | 74 | 2018-12-10 09:00 | 2018-12-12 09:00 | 2d |  |  | 蔡峰; 江亮儒 | 2h | 56 |
| 76 | 3.9 | 验证变更 | milestone, manual | 0d | 2018-12-14 09:00 | 2018-12-14 09:00 | 71, 72, 73, 74, 75 | 2018-12-10 09:00 | 2018-12-12 09:00 | 2d |  |  | 苏雨豪 |  |  |
| 77 | 4 | **培训与翻转课堂** |  | 38.25d | 2018-09-28 09:00 | 2018-11-06 09:00 |  |  |  |  | 0d |  |  | 25h | 504 |
| 78 | 4.1 | 负责讲解project的使用 | manual | 2h | 2018-09-28 09:00 | 2018-09-28 11:00 |  |  |  |  |  |  | 小组全体成员; 黄为波 | 3h | 28 |
| 79 | 4.2 | 负责讲解word文档规范排版 | manual | 1h | 2018-09-29 09:00 | 2018-09-29 10:00 |  |  |  |  |  |  | 黄为波; 小组全体成员 | 2h | 28 |
| 80 | 4.3 | uml概述的学习以及PPT制作 | manual | 1h | 2018-10-13 09:00 | 2018-10-13 10:00 |  |  |  |  |  |  | 小组全体成员 | 1h |  |
| 81 | 4.4 | 1.7UML2.0新特性+目录 | manual | 2h | 2018-10-14 09:00 | 2018-10-14 11:00 | 80 |  |  |  |  |  | 苏雨豪 | 2h | 56 |
| 82 | 4.5 | 完成1.1-1.4UML的结构制作 | manual | 2h | 2018-10-14 09:00 | 2018-10-14 11:00 | 80 |  |  |  |  |  | 陈子卿 | 2h | 56 |
| 83 | 4.6 | UML图PPT的初步编写 | manual | 2h | 2018-10-14 09:00 | 2018-10-14 11:00 | 80 |  |  |  |  |  | 江亮儒 | 2h | 56 |
| 84 | 4.7 | 完成UML视图及系统开发阶段部分 | manual | 2h | 2018-10-14 09:00 | 2018-10-14 11:00 | 80 |  |  |  |  |  | 蔡峰 | 2h | 56 |
| 85 | 4.8 | uml概述PPT答辩 | milestone, manual | 0d | 2018-10-17 09:00 | 2018-10-17 09:00 |  |  |  |  |  |  |  |  |  |
| 86 | 4.9 | uml概述PPT修改 | manual | 0.5h | 2018-10-19 09:00 | 2018-10-19 09:30 | 81, 82, 83, 84 |  |  |  |  |  | 江亮儒 | 0.5h | 14 |
| 87 | 4.10 | uml工具的学习 | manual | 1h | 2018-10-21 09:00 | 2018-10-21 10:00 |  |  |  |  |  |  | 小组全体成员 | 1h |  |
| 88 | 4.11 | uml工具翻转PPT制作 | manual | 1h | 2018-10-21 09:00 | 2018-10-21 10:00 |  |  |  |  |  |  | 江亮儒 | 1.5h | 42 |
| 89 | 4.12 | uml工具翻转PPT答辩 | milestone, manual | 0d | 2018-10-24 09:00 | 2018-10-24 09:00 |  |  |  |  |  |  |  |  |  |
| 90 | 4.13 | uml建模基础学习 | manual | 1h | 2018-10-25 09:00 | 2018-10-25 10:00 |  |  |  |  |  |  | 小组全体成员 | 1h |  |
| 91 | 4.14 | 用例图、类图PPT制作 |  | 2h | 2018-10-25 10:00 | 2018-10-25 12:00 | 90 |  |  |  | 59.25d | 6.88d | 黄为波 | 2h | 56 |
| 92 | 4.15 | 通信图PPT制作 | manual | 1h | 2018-10-27 09:00 | 2018-10-27 10:00 | 90 |  |  |  |  |  | 陈子卿 | 1h | 28 |
| 93 | 4.16 | 部署图PPT制作 | manual | 1h | 2018-10-28 09:00 | 2018-10-28 10:00 | 90 |  |  |  |  |  | 江亮儒 | 1h | 28 |
| 94 | 4.17 | 状态机图PPT制作 | manual | 1h | 2018-10-28 09:00 | 2018-10-28 10:00 | 90 |  |  |  |  |  | 苏雨豪 | 1h | 28 |
| 95 | 4.18 | 顺序图PPT制作 | manual | 1h | 2018-10-27 09:00 | 2018-10-27 10:00 | 90 |  |  |  |  |  | 蔡峰 | 1h | 28 |
| 96 | 4.19 | uml图PPT答辩 | milestone, manual | 0d | 2018-10-31 09:00 | 2018-10-31 09:00 | 91, 92, 93, 94, 95 |  |  |  |  |  |  |  |  |
| 97 | 4.20 | uml界面原型学习 | manual | 1h | 2018-11-01 09:00 | 2018-11-01 10:00 |  |  |  |  |  |  | 小组全体成员 | 1h |  |
| 98 | 4.21 | uml界面原型翻转 | milestone, manual | 0d | 2018-11-06 09:00 | 2018-11-06 09:00 | 97 |  |  |  |  |  |  |  |  |

| ID | WBS | Task | Type | Duration | Start | Finish | Total slack | Resources | Work |
| --- | --- | --- | --- | --- | --- | --- | --- | --- | --- |
| 99 | 5 | **会议** |  | 35.75d | 2018-09-21 09:00 | 2018-10-28 10:00 | 0d |  | 6h |
| 100 | 5.1 | 第1次会议（明确贯穿项目的职责） | manual | 1h | 2018-09-21 09:00 | 2018-09-21 10:00 |  | 小组全体成员 | 1h |
| 101 | 5.2 | 第2次会议(任务的安排与约定) | manual | 1h | 2018-09-28 09:00 | 2018-09-28 10:00 |  | 小组全体成员 | 1h |
| 102 | 5.3 | 第3次会议(任务的安排与约定) | manual | 1h | 2018-10-12 09:00 | 2018-10-12 10:00 |  | 小组全体成员 | 1h |
| 103 | 5.4 | 第4次会议(任务的安排与约定) | manual | 1h | 2018-10-19 09:00 | 2018-10-19 10:00 |  | 小组全体成员 | 1h |
| 104 | 5.5 | 第5次会议(阶段性检查与审核) | manual | 1h | 2018-10-20 09:00 | 2018-10-20 10:00 |  | 小组全体成员 | 1h |
| 105 | 5.6 | 第6次会议(阶段性检查与审核) | manual | 1h | 2018-10-28 09:00 | 2018-10-28 10:00 |  | 小组全体成员 | 1h |
| 107 | 5.7 | <新任务> | manual | 1d? | 2018-09-21 09:00 | 2018-09-22 09:00 |  |  |  |
